How a schedule from an exported table changed from version to version. A marks actual dates.

## Version 1 (saved 2026-10-16)

Note of the change: docs(docs): record the printed-infill float, no lead, and the corrosion strategy

| Task | Start | Finish |
| --- | --- | --- |
| Submit the senior design budget (SCU funding request) | 2026-10-06 | 2026-10-16 |
| Map the layered test protocol and unit counts per stage | 2026-10-10 | 2026-10-15 |
| Gantt chart and WBS for the course assignment | 2026-10-06 | 2026-10-18 |
| Write an alternatives analysis for the main mechanical choices | 2026-10-19 | 2026-11-06 |
| LLC and patent strategy for SCOUT IP | 2026-10-26 | 2026-11-25 |
| Decide a per-unit naming scheme for Scout prototypes | 2026-10-20 | 2026-10-30 |
| Deliver the final electronics component list and dimensions | 2026-10-06 | 2026-10-08 |
| Take the full electronics design to Shoba for a power and solar review | 2026-10-08 | 2026-10-09 |
| Bench parts order arrives (Feather M0, Adalogger, sensors, boost, TPL5111) | 2026-10-09 | 2026-10-09 |
| Inventory spare sensors and boards in advisor and team labs | 2026-10-07 | 2026-10-12 |
| Decide the hydrophone part (H2a-XLR vs H2dM) | 2026-10-12 | 2026-10-16 |
| Re-scope or close the LiFePO4 charging-path decision (ADR-0002) | 2026-10-14 | 2026-10-19 |
| Make it impossible to charge or short the primary D cell | 2026-10-09 | 2026-10-14 |
| Bring up the bench breadboard: DS18B20, RTC, microSD, SEN0189 wiring | 2026-10-12 | 2026-10-13 |
| Measure sleep current against the <5 mA target | 2026-10-13 | 2026-10-14 |
| Prove TPL5111 power-gating cuts the sleep floor to ~20 uA | 2026-10-14 | 2026-10-15 |
| Measure the SEN0189 chain: current, settle time, boost efficiency, inrush, polarity | 2026-10-14 | 2026-10-16 |
| Measure LoRa transmit current at +11 dBm | 2026-10-16 | 2026-10-19 |
| Run the RFM95 link test with a second radio | 2026-10-15 | 2026-10-16 |
| Design the SEN0189 analog front end as non-inverting | 2026-09-01 | 2026-10-16 |
| Implement per-sensor power switching via transistors | 2026-10-16 | 2026-10-21 |
| Add an internal temp/humidity sensor for State-of-Health | 2026-10-12 | 2026-10-15 |
| Document the bench wiring: labeled photo and schematic sketch to /hardware | 2026-10-19 | 2026-10-20 |
| Implement battery-voltage telemetry | 2026-10-19 | 2026-10-23 |
| Chlorophyll fluorometer feasibility and battery connector polarity check | 2026-11-03 | 2026-11-25 |
| Validate the Phase-1 SAMD21 drivers on real hardware | 2026-10-13 | 2026-10-16 |
| Bring up the real LoRa receiver on the shore station | 2026-10-16 | 2026-10-30 |
| Bench-verify the FCC-compliant LoRa modem config | 2026-10-16 | 2026-10-20 |
| Calibrate SEN0189 turbidity to NTU | 2026-10-16 | 2026-10-23 |
| Faculty or a compliance lab review of the FCC 915 MHz findings | 2026-10-12 | 2026-10-23 |
| Fix the run_pipeline flag inconsistency and recover the missing Sesoko recording | 2026-10-19 | 2026-10-30 |
| Adopt Navid's sleep/wake protocol and re-derive the packet ceiling | 2026-10-26 | 2026-11-13 |
| Review the IoT dashboard, add biofouling state to the Fleet page, improve the PNG dashboard | 2026-11-02 | 2026-11-25 |
| Drift reference and acoustic tamper detection | 2026-11-09 | 2026-11-25 |
| Reprint the face-seal clamp and record the failing O-ring tolerance | 2026-10-08 | 2026-10-12 |
| Submersion re-test the face-seal joint on the clamp and sensor pod | 2026-10-01 | 2026-10-16 |
| Grow the sensor pod dry chamber to 52 mm and re-export the penetration and flood chamber | 2026-09-14 | 2026-10-13 |
| Validate the remodelled turbidity sensor housing face seal | 2026-10-20 | 2026-10-23 |
| Start saltwater-bath leak tests on printed test capsules | 2026-10-08 | 2026-10-15 |
| Finish the electronics housing lid: bolt clearance holes and marking wording | 2026-10-13 | 2026-10-15 |
| Engrave the FCC ID label into the enclosure before printing | 2026-10-09 | 2026-10-12 |
| Order the stainless fasteners once the housing is dimensioned | 2026-10-14 | 2026-10-17 |
| Design the chassis top section: sealing and service-access port | 2026-09-03 | 2026-10-21 |
| Bring the large lab 3D printer back online | 2026-10-07 | 2026-10-16 |
| Run foam-fill manufacturing trials on sacrificial wedges | 2026-10-19 | 2026-10-21 |
| Publish up-to-date v5 drawings for the wedge and wedge bottom | 2026-10-15 | 2026-10-15 |
| Rebuild the freeboard model's vertical stack from the STEP geometry | 2026-09-29 | 2026-10-12 |
| FEA on the ballast stem and its chassis joint (earlier LC1-LC9 runs stand) | 2026-10-26 | 2026-11-06 |
| Re-run LC7 with the mooring moved to the pipe collar | 2026-10-14 | 2026-10-14 |
| Develop the self-righting ballast stem to 24 in below the keel | 2026-10-13 | 2026-10-23 |
| Check whether lead ballast is acceptable under the reef permit | 2026-10-12 | 2026-10-12 |
| Confirm the swivel, U-bolt and AS568-247 part numbers | 2026-10-12 | 2026-10-12 |
| Define the marine fastener and anti-loosening strategy | 2026-10-16 | 2026-10-16 |
| Identify a propeller-resistant mooring/tether line | 2026-10-21 | 2026-10-30 |
| Design improvement studies (inserts, cable routing, modular rod, split chassis, float-free, manufacturability) | 2026-10-27 | 2026-11-25 |
| Refine the stem and solar mount; audit the Onshape Initial Frame folder | 2026-10-19 | 2026-11-25 |
| Design the snap-connector sensor string; produce an exploded-view animation | 2026-11-03 | 2026-11-25 |
| Corrosion strategy, material samples, marine coating, biofouling features | 2026-11-30 | 2027-01-15 |
| Identify a local backup test site and request pool access | 2026-10-12 | 2026-10-30 |
| Bench parts arrive (assumed Fri) | 2026-10-09 | 2026-10-09 |
| Component list delivered; unblocks housing dimensions | 2026-10-08 | 2026-10-08 |
| Phase 1 exit: subsystem bring-up complete | 2026-10-16 | 2026-10-16 |
| SCU: Undergraduate Programs Project Funding Request due; Gantt chart due | 2026-10-18 | 2026-10-18 |
| Phase 2 starts: system integration | 2026-10-19 | 2026-10-19 |
| Phase 2 exit | 2026-11-25 | 2026-11-25 |
| Phase 3 exit: enclosure and waterproofing | 2027-01-15 | 2027-01-15 |
| SCU: Senior Design Conference registration closes (winter) | 2027-02-01 | 2027-02-01 |
| Source the 2 lb pour foam (US Composites #0204, about 3 kits) | 2026-10-08 | 2026-10-16 |
| Source PETG filament for the second full buoy (about 4 to 5 kg, to confirm) | 2026-10-08 | 2026-10-14 |
| Source Instant Ocean sea salt and a salinity meter for the 35 ppt tub tests | 2026-10-12 | 2026-10-12 |

| Task | Start | Finish |
| --- | --- | --- |
| Finish J-B Weld on the remaining exterior seams of the assembled buoy | 2026-10-12 | 2026-10-12 |
| TEST: dry-float the buoy in a bin; waterline and freeboard vs the 4.27 in model | 2026-10-16 | 2026-10-16 |
| TEST: self-righting tilt test from 90 and 180 degrees | 2026-10-23 | 2026-10-27 |
| TEST: float the whole buoy in 35 ppt salt water; record the waterline shift | 2026-10-27 | 2026-10-30 |
| TEST: drop a sacrificial assembled ring with 1.5 in caps | 2026-10-19 | 2026-10-22 |
| TEST: proof-load the mooring attachment and ballast-arm root to 1.5x the LC9 snap | 2026-10-23 | 2026-10-30 |
| Build the final turbidity pod with the SEN0189 (dry chamber 52 mm, 6 bolts) | 2026-10-20 | 2026-10-20 |
| TEST: 1-week saltwater soak of the final turbidity pod with the SEN0189 live | 2026-10-26 | 2026-10-30 |
| TEST: pressure-test the sealed housings to 8 m equivalent for 24 hr | 2026-10-30 | 2026-11-09 |
| Print the second full buoy set (the foam-filled unit) | 2026-10-14 | 2026-10-28 |
| Assemble, seal and foam-fill the second buoy | 2026-10-28 | 2026-11-04 |
| TEST: 4-week saltwater float soak, no foam (unit 1) | 2026-10-30 | 2026-11-27 |
| TEST: 4-week saltwater float soak, injected foam (unit 2) | 2026-11-04 | 2026-12-02 |
| TEST: integrated MVP test: electronics in the floating buoy, sensors read, packet at the shore station | 2026-11-30 | 2026-12-04 |
| Plan the ocean flotation test: site, permission, boat or pier, safety | 2026-11-09 | 2026-11-20 |
| TEST: real-ocean flotation test (after winter break) | 2027-01-25 | 2027-01-29 |
| TEST: every sensor reads data (DS18B20 temperature and SEN0189 turbidity) in a water bath, 24 hr log | 2026-10-16 | 2026-10-22 |
| TEST: data accuracy: temperature vs a reference thermometer, turbidity vs formazin standards | 2026-10-23 | 2026-11-02 |
| TEST: data transmission: a sensor packet goes over LoRa to the shore station and matches the logged value | 2026-10-30 | 2026-11-06 |
| Place the three follow-up electronics orders (D cells, hydrophone, outdoor antenna) | 2026-10-19 | 2026-10-26 |
| TEST: run 7 days on two D cells and confirm a 12-month extrapolation | 2026-11-02 | 2026-11-09 |
| TEST: run the sealed buoy electronics 7 to 14 days in the housing | 2026-11-10 | 2026-11-24 |
| TEST: run the standby duty-cycle loop unattended for 24 hr on the bench | 2026-11-02 | 2026-11-06 |
| Turbidity pod line complete (final pod soaked 1 week) | 2026-10-30 | 2026-10-30 |
| MVP functional prototype: floats, rights itself, reads one temperature and one turbidity value, packet at the shore station (target) | 2026-12-04 | 2026-12-04 |
| MVP hard limit: before winter break | 2026-12-11 | 2026-12-11 |

## Version 2 (saved 2026-10-23)

Note of the change: Merge pull request #204 from David-Chousal/csen/sco-12-turbidity-fau

Last finish stays 2027-02-01.

Added:

| Task | Start | Finish |
| --- | --- | --- |
| Bring up the bench breadboard: DS18B20, RTC, microSD, Grove turbidity wiring | 2026-10-12 | 2026-10-13 |
| Measure the Grove turbidity sensor: current, settle time, inrush, polarity | 2026-10-14 | 2026-10-16 |
| Calibrate the Grove turbidity sensor against formazin standards (FAU) | 2026-10-16 | 2026-11-20 |
| TEST: 1-week saltwater soak of the final turbidity pod with the Grove sensor live | 2026-10-26 | 2026-10-30 |
| TEST: every sensor reads data (DS18B20 temperature and Grove turbidity) in a water bath, 24 hr log | 2026-10-16 | 2026-10-22 |

Removed: Bring up the bench breadboard: DS18B20, RTC, microSD, SEN0189 wiring; Measure the SEN0189 chain: current, settle time, boost efficiency, inrush, polarity; Calibrate SEN0189 turbidity to NTU; TEST: 1-week saltwater soak of the final turbidity pod with the SEN0189 live; TEST: every sensor reads data (DS18B20 temperature and SEN0189 turbidity) in a water bath, 24 hr log

## Version 3 (saved 2026-10-30)

Note of the change: docs(planning): resync the Gantt from Linear and extend it to the end of fall quarter

Last finish 2027-02-01 → 2027-05-28 (+116d).

Added:

| Task | Start | Finish |
| --- | --- | --- |
| Get the hazard assessment form signed by Dr. Krishnan | 2026-10-28 | 2026-11-04 |
| Present the top-level system architecture and demos to Dr. Krishnan and Dr. Kuczenski | 2026-11-02 | 2026-11-06 |
| Apply for Environmental Engineering storage space for the water test tub | 2026-11-02 | 2026-11-06 |
| Write a black-box integration doc per subsystem | 2026-11-02 | 2026-11-13 |
| Write the temperature sensor test protocol and send it to Shoba and Jes | 2026-10-28 | 2026-10-30 |
| Run the temperature sensor test and demo it in the lab | 2026-10-30 | 2026-11-04 |
| Order the turbidity sensor and a spare | 2026-10-26 | 2026-11-02 |
| Reuse the earlier team's hydrophone amplifier design | 2026-10-30 | 2026-11-06 |
| Calibrate the internal humidity sensor with known amounts of water | 2026-11-09 | 2026-11-13 |
| Push received readings from the shore station to the dashboard over WiFi | 2026-10-28 | 2026-11-06 |
| TEST: end-to-end rehearsal, buoy reading to shore station to dashboard, 48 h on the bench | 2026-11-09 | 2026-11-20 |
| Buy sea salt and a salinity meter for the 35 ppt tests | 2026-10-30 | 2026-11-02 |
| Print the electronics housing cap; gland fit coupon first | 2026-10-30 | 2026-10-31 |
| CAD the eye and attachment points (side through holes) | 2026-10-30 | 2026-10-30 |
| Re-run the hang-hole FEA with PETG, a refined mesh and the right loads | 2026-11-02 | 2026-11-06 |
| Reconcile the lid layout for the top attachment, SMA bulkhead and two-D-cell bay | 2026-11-02 | 2026-11-06 |
| Choose the waterproof coating system and source it | 2026-10-30 | 2026-11-03 |
| Apply and cure the waterproof coating on both buoys | 2026-11-03 | 2026-11-13 |
| Add the SMA antenna bulkhead and two-D-cell bay to the lid | 2026-11-06 | 2026-11-13 |
| Define the hung-from-dock V1 test rig, deployment and retrieval | 2026-11-06 | 2026-11-10 |
| Print the top attachments and proof-load them to about 1.5x the hung load | 2026-11-06 | 2026-11-13 |
| Submersion re-test the seal with the top attachment installed | 2026-11-13 | 2026-11-20 |
| Float-test the wedge/ring buoy with the full payload | 2026-11-10 | 2026-11-13 |
| Produce updated drawings of the new components | 2026-11-13 | 2026-11-20 |
| Integration build: electronics and sensor pod installed in the printed buoy and sealed | 2026-11-30 | 2026-12-02 |
| FULL SYSTEM INTEGRATION (fall goal): sealed floating buoy reads temperature and turbidity, packet reaches the shore station and the dashboard | 2026-12-04 | 2026-12-04 |
| First sensor working: temperature test demoed to the advisors | 2026-11-04 | 2026-11-04 |
| Soak started: unit 1 in 35 ppt salt water (latest start to finish by 12/3) | 2026-11-04 | 2026-11-04 |
| Phase 4 exit: field prototype deployed, two-week local test done | 2027-02-26 | 2027-02-26 |
| Phase 5 exit: Hawaii deployment prep done, hardware shipped | 2027-03-19 | 2027-03-19 |
| Hawaii live deployment starts (site and permits to be confirmed) | 2027-03-22 | 2027-03-22 |
| Project end: final report and data from the deployment | 2027-05-28 | 2027-05-28 |

Changed:

| Task | Start | Finish |
| --- | --- | --- |
| Calibrate the Grove turbidity sensor against formazin standards (FAU) | 2026-10-16 → 2026-11-03 (+18d) |  |
| Submersion re-test the face-seal joint on the clamp and sensor pod | 2026-10-01 → 2026-10-12 (+11d) |  |
| TEST: self-righting tilt test from 90 and 180 degrees | 2026-10-23 → 2026-11-02 (+10d) | 2026-10-27 → 2026-11-03 (+7d) |
| TEST: float the whole buoy in 35 ppt salt water; record the waterline shift | 2026-10-27 → 2026-11-03 (+7d) | 2026-10-30 → 2026-11-04 (+5d) |
| TEST: 1-week saltwater soak of the final turbidity pod with the Grove sensor live | 2026-10-26 → 2026-11-09 (+14d) | 2026-10-30 → 2026-11-16 (+17d) |
| TEST: pressure-test the sealed housings to 8 m equivalent for 24 hr | 2026-10-30 → 2026-11-16 (+17d) | 2026-11-09 → 2026-11-23 (+14d) |
| TEST: 4-week saltwater float soak, no foam (unit 1) | 2026-10-30 → 2026-11-04 (+5d) | 2026-11-27 → 2026-12-03 (+6d) |
| TEST: integrated MVP test: electronics in the floating buoy, sensors read, packet at the shore station | 2026-11-30 → 2026-12-03 (+3d) |  |
| TEST: data accuracy: temperature vs a reference thermometer, turbidity vs formazin standards | 2026-10-23 → 2026-10-30 (+7d) | 2026-11-02 → 2026-11-04 (+2d) |
| TEST: run 7 days on two D cells and confirm a 12-month extrapolation | 2026-11-02 → 2026-11-09 (+7d) | 2026-11-09 → 2026-11-16 (+7d) |
| TEST: run the sealed buoy electronics 7 to 14 days in the housing | 2026-11-10 → 2026-11-16 (+6d) | 2026-11-24 → 2026-11-28 (+4d) |

## Version 4 (saved 2026-11-04)

Note of the change: Merge pull request #280 from David-Chousal/docs/gantt-sync-2026-11-04

Last finish stays 2027-05-28.

Changed:

| Task | Start | Finish |
| --- | --- | --- |
| Run the RFM95 link test with a second radio |  | 2026-10-16 → 2026-11-05 (+20d) |
| Validate the Phase-1 SAMD21 drivers on real hardware |  | 2026-10-16 → 2026-11-06 (+21d) |
| Start saltwater-bath leak tests on printed test capsules |  | 2026-10-15 → 2026-11-11 (+27d) |
| TEST: self-righting tilt test from 90 and 180 degrees |  | 2026-11-03 → 2026-11-05 (+2d) |
| TEST: 1-week saltwater soak of the final turbidity pod with the Grove sensor live |  | 2026-11-16 → 2026-11-24 (+8d) |
| TEST: pressure-test the sealed housings to 8 m equivalent for 24 hr | 2026-11-16 → 2026-11-24 (+8d) | 2026-11-23 → 2026-11-24 (+1d) |
| TEST: 4-week saltwater float soak, no foam (unit 1) |  | 2026-12-03 → 2026-12-11 (+8d) |
| TEST: data transmission: a sensor packet goes over LoRa to the shore station and matches the logged value | 2026-10-30 → 2026-11-05 (+6d) |  |
| TEST: run 7 days on two D cells and confirm a 12-month extrapolation |  | 2026-11-16 → 2026-11-25 (+9d) |
| TEST: run the sealed buoy electronics 7 to 14 days in the housing | 2026-11-16 → 2026-11-25 (+9d) | 2026-11-28 → 2026-12-18 (+20d) |
| Choose the waterproof coating system and source it |  | 2026-11-03 → 2026-11-06 (+3d) |
| Apply and cure the waterproof coating on both buoys | 2026-11-03 → 2026-11-06 (+3d) |  |
| Integration build: electronics and sensor pod installed in the printed buoy and sealed | 2026-11-30 → 2026-11-27 (-3d) | 2026-12-02 → 2026-11-27 (-5d) |

## Version 5 (saved 2026-11-15)

Note of the change: docs(planning): resync the WBS and rebuild the Gantt for WAR week 8

Last finish stays 2027-05-28.

Changed:

| Task | Start | Finish |
| --- | --- | --- |
| Run the RFM95 link test with a second radio |  | 2026-11-05 → 2026-11-17 (+12d) |
| TEST: pressure-test the sealed housings to 8 m equivalent for 24 hr | 2026-11-24 → 2026-11-17 (-7d) | 2026-11-24 → 2026-11-19 (-5d) |
| TEST: data transmission: a sensor packet goes over LoRa to the shore station and matches the logged value | 2026-11-05 → 2026-11-17 (+12d) | 2026-11-06 → 2026-11-18 (+12d) |
| TEST: run the sealed buoy electronics 7 to 14 days in the housing | 2026-11-25 → 2026-11-20 (-5d) | 2026-12-18 → 2026-11-27 (-21d) |
| TEST: run the standby duty-cycle loop unattended for 24 hr on the bench | 2026-11-02 → 2026-11-16 (+14d) | 2026-11-06 → 2026-11-17 (+11d) |
| TEST: end-to-end rehearsal, buoy reading to shore station to dashboard, 48 h on the bench | 2026-11-09 → 2026-11-18 (+9d) |  |
| Apply and cure the waterproof coating on both buoys |  | 2026-11-13 → 2026-11-21 (+8d) |
| Add the SMA antenna bulkhead and two-D-cell bay to the lid |  | 2026-11-13 → 2026-11-16 (+3d) |
| Integration build: electronics and sensor pod installed in the printed buoy and sealed | 2026-11-27 → 2026-11-30 (+3d) | 2026-11-27 → 2026-12-01 (+4d) |

## Version 6 (saved 2026-11-27)

Note of the change: Merge 594b5e1b0894d089020715882a540f54a789e34b into a8415514042f980bc6f4deaa09feb161a085b8fe

Last finish stays 2027-05-28.

Changed:

| Task | Start | Finish |
| --- | --- | --- |
| TEST: pressure-test the sealed housings to 8 m equivalent for 24 hr | 2026-11-17 → 2026-11-28 (+11d) | 2026-11-19 → 2026-11-29 (+10d) |
